# Proyecto EcoAlerta - Plan y Cronograma de Testing

Schedule from MS Project, 2026-08-25 to 2026-11-04, status date 2026-11-01, A marks actual dates.
FOM

## Calendars

- Estándar: Mon-Fri 09:00-13:00, 15:00-19:00; Sat-Sun off.

## Resources

| Resource |
| --- |
| An Procesos |
| Referente Perforación |
| Referente Pulling |
| Referente Workover |
| QA |
| GF |
| MV |
| Lider Referente Técnico Otras UG |
| Lider Referente Técnico GSJ |
| SPA |
| CMO |
| PMO |
| Eduardo Salvador |
| Manuel Vila |
| Pedro Franko |
| LOGISTICA |
| OPER & TELCO |
| PROVEEDOR Assesment |
| SEGINF |
| TECNOLOGIA |
| Maximiliano Cordoba |
| Gustavo Scarafia |
| Aceco TI |
| Manuel Vila; Ariel Marin |
| Rodriguez Iván |
| Equipo Completo |
| Kuhn Joaquin |
| Benitez Angel |
| Rodriguez Iván / Benitez Angel |
| Escobar Raul / Benitez Facundo |
| Kuhn Joaquin / Rodriguez Iván |
| Rodriguez Iván / Kuhn Joaquin |
| Benitez Facundo / Escobar Raul |
| Escobar Raul |
| Benitez Angel / Rodriguez Iván |
| Escobar Raul / Rodriguez Iván |
| Benitez Facundo |
| Rodriguez Iván (FrontEnd) |
| Benitez Angel (BackEnd) |
| Kuhn Joaquin / Benitez Facundo |

## Schedule

| ID | WBS | Task | Type | Duration | Start | Finish | Complete | Remaining | Baseline start | Baseline finish | Baseline duration | Total slack | Constraint | Resources | Work | Actual work | Costos |
| --- | --- | --- | --- | --- | --- | --- | --- | --- | --- | --- | --- | --- | --- | --- | --- | --- | --- |
| 1 | 1 | **Proyecto EcoAlerta - Ciclo de Vida y Testware de Calidad** |  | 51.88d | 2026-08-25 A | 2026-11-04 | 96% | 2.28d | 2026-08-25 | 2026-11-03 | 50.88d? | 0d |  |  | 864h | 826h |  |
| 2 | 1.1 | **FASE 1: Setup Arquitectura y Prototipos UI/UX** |  | 9.88d | 2026-08-25 A | 2026-09-07 | 98% | 0.21d | 2026-08-25 | 2026-09-07 | 9.88d? | 42d |  |  | 144h | 141h | RE |
| 3 | 1.1.1 | Setup inicial y arquitectura client/server monorepo |  | 4d | 2026-08-25 A | 2026-08-28 | 97% | 0.12d | 2026-08-25 | 2026-08-28 | 3.88d? | 47.88d | finish no earlier than 2026-08-28 | Rodriguez Iván | 32h | 31h | RE |
| 4 | 1.1.2 | Wireframes y maquetacion UI/UX HomeScreen inicial |  | 3d | 2026-08-26 A | 2026-08-30 A | 100% |  | 2026-08-26 | 2026-08-30 | 3d? |  | finish no earlier than 2026-08-30 | Kuhn Joaquin | 24h | 24h |  |
| 5 | 1.1.3 | Setup Backend Express TypeScript y Prisma ORM |  | 3d | 2026-08-27 A | 2026-08-31 | 96% | 0.12d | 2026-08-27 | 2026-08-31 | 2.88d? | 46.88d | finish no earlier than 2026-08-31 | Benitez Angel | 24h | 23h | RE |
| 6 | 1.1.4 | Contexto de Carrito y navegacion inicial |  | 4d | 2026-08-31 A | 2026-09-03 | 97% | 0.12d | 2026-08-31 | 2026-09-03 | 3.88d? | 43.88d | finish no earlier than 2026-09-03 | Rodriguez Iván / Benitez Angel | 32h | 31h | RE |
| 7 | 1.1.5 | Estandares Scrum y alineacion de calidad |  | 4d | 2026-09-01 A | 2026-09-05 A | 100% |  | 2026-09-01 | 2026-09-05 | 4d? |  | finish no earlier than 2026-09-05 | Escobar Raul / Benitez Facundo | 32h | 32h |  |
| 8 | 1.1.6 | Hito 1: Cimientos de Arquitectura y UI Aprobados | milestone | 0d | 2026-09-07 A | 2026-09-07 A | 100% |  | 2026-09-07 | 2026-09-07 | 0d? |  | start no earlier than 2026-09-07 | Equipo Completo |  |  | HC |
| 9 | 1.2 | **FASE 2: Desarrollo Core Frontend y Modulos Base** |  | 17d | 2026-09-08 A | 2026-09-30 | 99% | 0.24d | 2026-09-08 | 2026-09-30 | 16.88d? | 24.88d |  |  | 280h | 276h | RE |
| 10 | 1.2.1 | Pantallas Perfil y MasScreen con mockups |  | 4d | 2026-09-08 A | 2026-09-12 A | 100% |  | 2026-09-08 | 2026-09-12 | 4d? |  | finish no earlier than 2026-09-12 | Rodriguez Iván | 32h | 32h |  |
| 11 | 1.2.2 | Modulo Operativo Agente de Campo y vistas |  | 6d | 2026-09-08 A | 2026-09-15 | 98% | 0.12d | 2026-09-08 | 2026-09-15 | 5.88d? | 35.88d | finish no earlier than 2026-09-15 | Rodriguez Iván | 48h | 47h | RE |
| 12 | 1.2.3 | Integracion camara nativa Expo y selector galeria |  | 6d | 2026-09-09 A | 2026-09-16 | 98% | 0.12d | 2026-09-09 | 2026-09-16 | 5.88d? | 34.88d | finish no earlier than 2026-09-16 | Kuhn Joaquin / Rodriguez Iván | 48h | 47h | RE |
| 13 | 1.2.4 | Refinamiento visual UI de Tienda y Carrito |  | 6d | 2026-09-14 A | 2026-09-21 A | 100% |  | 2026-09-14 | 2026-09-22 | 6.88d? |  | finish no earlier than 2026-09-22 | Kuhn Joaquin | 48h | 48h |  |
| 14 | 1.2.5 | Integracion Home Administrador Municipal |  | 7d | 2026-09-18 A | 2026-09-28 | 98% | 0.12d | 2026-09-18 | 2026-09-28 | 6.88d? | 26.88d | finish no earlier than 2026-09-28 | Rodriguez Iván / Kuhn Joaquin | 56h | 55h | RE |
| 15 | 1.2.6 | Revision de usabilidad y pruebas exploratorias |  | 6d | 2026-09-23 A | 2026-09-30 | 98% | 0.12d | 2026-09-23 | 2026-09-30 | 5.88d? | 24.88d | finish no earlier than 2026-09-30 | Benitez Facundo / Escobar Raul | 48h | 47h | RE |
| 16 | 1.2.7 | Hito 2: Interfaces Core y Mockups Integrados | milestone | 0d | 2026-09-30 A | 2026-09-30 A | 100% |  | 2026-09-30 | 2026-09-30 | 0d? |  | start no earlier than 2026-09-30 | Equipo Completo |  |  | HC |
| 17 | 1.3 | **FASE 3: Especificacion Formal SDD Base de Datos y Backend** |  | 12d | 2026-10-01 A | 2026-10-18 | 99% | 0.07d | 2026-10-01 | 2026-10-18 | 12d? | 12.88d |  |  | 168h | 167h | RE |
| 18 | 1.3.1 | Migracion a Supabase PostgreSQL y Prisma ORM |  | 9d | 2026-10-01 A | 2026-10-13 A | 100% |  | 2026-10-01 | 2026-10-14 | 9.88d? |  | finish no earlier than 2026-10-14 | Benitez Angel | 72h | 72h |  |
| 19 | 1.3.2 | Adopcion Spec-Driven Development y Backlog HU |  | 4d | 2026-10-12 A | 2026-10-15 | 97% | 0.12d | 2026-10-12 | 2026-10-15 | 3.88d? | 13.88d | finish no earlier than 2026-10-15 | Escobar Raul | 32h | 31h | RE |
| 20 | 1.3.3 | Endpoints REST Triaje Asignacion y Concurrencia |  | 3d | 2026-10-14 A | 2026-10-18 A | 100% |  | 2026-10-14 | 2026-10-18 | 3d? |  | finish no earlier than 2026-10-18 | Benitez Angel | 24h | 24h |  |
| 21 | 1.3.4 | Integracion Servicios REST y Cliente Movil |  | 3d | 2026-10-14 A | 2026-10-18 A | 100% |  | 2026-10-14 | 2026-10-18 | 3d? |  | finish no earlier than 2026-10-18 | Rodriguez Iván | 24h | 24h |  |
| 22 | 1.3.5 | Acreditacion de Puntos Saneamiento y Canjes |  | 2d | 2026-10-15 A | 2026-10-18 A | 100% |  | 2026-10-15 | 2026-10-18 | 2d? |  | finish no earlier than 2026-10-18 | Benitez Angel / Rodriguez Iván | 16h | 16h |  |
| 23 | 1.3.6 | Hito 3: Backend Supabase y Modulos 001-006 Conectados | milestone | 0d | 2026-10-18 A | 2026-10-18 A | 100% |  | 2026-10-18 | 2026-10-18 | 0d? |  | start no earlier than 2026-10-18 | Equipo Completo |  |  | HC |
| 24 | 1.4 | **FASE 4: Finalizacion de Modulos Testware y Correccion Bugs** |  | 8d | 2026-10-19 A | 2026-10-28 | 97% | 0.25d | 2026-10-19 | 2026-10-28 | 7.88d? | 4.88d |  |  | 160h | 155h | RE |
| 25 | 1.4.1 | Cierre Modulo 001 Auth RBAC y Logout Seguro |  | 4d | 2026-10-19 A | 2026-10-22 | 97% | 0.12d | 2026-10-19 | 2026-10-22 | 3.88d? | 8.88d | finish no earlier than 2026-10-22 | Rodriguez Iván / Benitez Angel | 32h | 31h | RE |
| 26 | 1.4.2 | Cierre Modulo 002 Reporte Ciudadano y GPS |  | 3d | 2026-10-21 A | 2026-10-24 A | 100% |  | 2026-10-21 | 2026-10-24 | 3d? |  | finish no earlier than 2026-10-24 | Rodriguez Iván / Kuhn Joaquin | 24h | 24h |  |
| 27 | 1.4.3 | Upgrade Expo SDK 58 y Resiliencia de Red |  | 2d | 2026-10-23 A | 2026-10-26 | 94% | 0.12d | 2026-10-23 | 2026-10-26 | 1.88d? | 6.88d | finish no earlier than 2026-10-26 | Escobar Raul / Rodriguez Iván | 16h | 15h | RE |
| 28 | 1.4.4 | Plan Maestro de Testing IEEE 829 y Matriz RTM |  | 2d | 2026-10-26 A | 2026-10-27 | 94% | 0.12d | 2026-10-26 | 2026-10-27 | 1.88d? | 5.88d | finish no earlier than 2026-10-27 | Escobar Raul / Benitez Facundo | 16h | 15h | RE |
| 29 | 1.4.5 | Diseno de 67 Casos de Prueba Detallados |  | 2d | 2026-10-26 A | 2026-10-27 | 94% | 0.12d | 2026-10-26 | 2026-10-27 | 1.88d? | 5.88d | finish no earlier than 2026-10-27 | Benitez Facundo | 16h | 15h | RE |
| 30 | 1.4.6 | Correccion de BUG-101 en Compresion de Imagen |  | 2d | 2026-10-26 A | 2026-10-27 A | 100% |  | 2026-10-26 | 2026-10-28 | 2.88d? |  | finish no earlier than 2026-10-28 | Rodriguez Iván (FrontEnd) | 16h | 16h |  |
| 31 | 1.4.7 | Correccion de BUG-102 en Reserva Stock Concurrente |  | 2d | 2026-10-26 A | 2026-10-27 A | 100% |  | 2026-10-26 | 2026-10-28 | 2.88d? |  | finish no earlier than 2026-10-28 | Benitez Angel (BackEnd) | 16h | 16h |  |
| 32 | 1.4.8 | Modulo 007 Alta Personal Municipal y Foto Camara |  | 1d | 2026-10-27 A | 2026-10-27 A | 100% |  | 2026-10-27 | 2026-10-28 | 1.88d? |  | finish no earlier than 2026-10-28 | Rodriguez Iván / Benitez Angel | 8h | 8h |  |
| 33 | 1.4.9 | Modulo 007 Gestion Colaboradores y Baja Transaccional |  | 2d | 2026-10-27 A | 2026-10-28 | 94% | 0.12d | 2026-10-27 | 2026-10-28 | 1.88d? | 4.88d | finish no earlier than 2026-10-28 | Benitez Angel / Rodriguez Iván | 16h | 15h | RE |
| 34 | 1.4.10 | Hito 4: Testware y Defectos 100% Corregidos | milestone | 0d | 2026-10-28 A | 2026-10-28 A | 100% |  | 2026-10-28 | 2026-10-28 | 0d? |  | start no earlier than 2026-10-28 | Equipo Completo |  |  | HC |

| ID | WBS | Task | Type | Duration | Start | Finish | Complete | Remaining | Baseline start | Baseline finish | Baseline duration | Total slack | Constraint | Resources | Work | Actual work | Costos |
| --- | --- | --- | --- | --- | --- | --- | --- | --- | --- | --- | --- | --- | --- | --- | --- | --- | --- |
| 35 | 1.5 | **FASE 5: Ejecucion de Pruebas E2E Regresion y Modulo 008** |  | 3d | 2026-10-28 A | 2026-10-31 | 99% | 0.04d | 2026-10-28 | 2026-10-31 | 3d? | 2.88d |  |  | 72h | 71h | RE |
| 36 | 1.5.1 | Modulo 008 Onboarding 3 Tarjetas Categorias y Storage |  | 3d | 2026-10-28 A | 2026-10-31 A | 100% |  | 2026-10-28 | 2026-10-31 | 3d? |  | finish no earlier than 2026-10-31 | Rodriguez Iván / Benitez Angel | 24h | 24h |  |
| 37 | 1.5.2 | Ejecucion de Suites E2E y Pruebas de Regresion (146 tests) |  | 3d | 2026-10-28 A | 2026-10-30 | 96% | 0.12d | 2026-10-28 | 2026-10-30 | 2.88d? | 2.88d | finish no earlier than 2026-10-30 | Benitez Facundo | 24h | 23h | RE |
| 38 | 1.5.3 | Validacion Integral Flujo Completo Admin-Agente-Colaborador |  | 2d | 2026-10-29 A | 2026-10-31 A | 100% |  | 2026-10-29 | 2026-10-31 | 2d? |  | finish no earlier than 2026-10-31 | Rodriguez Iván / Benitez Angel | 16h | 16h |  |
| 39 | 1.5.4 | Revision de Usabilidad y Feedback Visual en Dispositivo |  | 1d | 2026-10-30 A | 2026-10-31 A | 100% |  | 2026-10-30 | 2026-10-31 | 1d? |  | finish no earlier than 2026-10-31 | Kuhn Joaquin / Benitez Facundo | 8h | 8h |  |
| 40 | 1.5.5 | Hito 5: Pruebas E2E, Regresion y Modulos Conformes | milestone | 0d | 2026-10-31 A | 2026-10-31 A | 100% |  | 2026-10-31 | 2026-10-31 | 0d? |  | start no earlier than 2026-10-31 | Equipo Completo |  |  | HC |
| 41 | 1.6 | **FASE 6: Certificacion ISO 25010 y Cierre del Proyecto** |  | 3.88d | 2026-10-30 A | 2026-11-04 | 40% | 2.33d | 2026-10-30 | 2026-11-03 | 2.88d? | 0d |  |  | 40h | 16h |  |
| 42 | 1.6.1 | Evaluacion Checklists ISO 25010 y Peer Review |  | 1d | 2026-10-30 A | 2026-11-01 A | 100% |  | 2026-10-30 | 2026-11-01 | 1d? |  | finish no earlier than 2026-11-01 | Equipo Completo | 8h | 8h |  |
| 43 | 1.6.2 | Consolidacion de Testware Final Storyboard y Excel en Drive |  | 1d | 2026-10-30 A | 2026-11-01 A | 100% |  | 2026-10-30 | 2026-11-01 | 1d? |  | finish no earlier than 2026-11-01 | Escobar Raul / Benitez Facundo | 8h | 8h |  |
| 44 | 1.6.3 | Entrega de Documentacion y Testware Final (Lunes 02/11) |  | 1d | 2026-11-02 | 2026-11-02 |  |  | 2026-11-02 | 2026-11-02 | 0.88d? | 1.88d | start no earlier than 2026-11-02 | Equipo Completo | 8h |  | NC |
| 45 | 1.6.4 | Cierre del Proyecto y Evaluacion Final (Martes 03/11) |  | 1d | 2026-11-02 | 2026-11-03 |  |  | 2026-11-03 | 2026-11-03 | 0.88d? | 1d | finish no earlier than 2026-11-03 | Equipo Completo | 8h |  | NC |
| 46 | 1.6.5 | Hito 6: Dictamen de Aprobacion y Finalizacion |  | 1d | 2026-11-03 | 2026-11-04 |  |  | 2026-11-03 | 2026-11-03 | 0d? | 0d | start no earlier than 2026-11-03 | Equipo Completo | 8h |  | NC |
